# 项目管理

Schedule from MS Project, 2023-11-20 to 2023-12-30, costs in ¥.

## Calendars

- 标准: Mon-Fri 08:00-12:00, 13:00-17:00; Sat-Sun off.

## Resources

| Resource | Rate | Cost per use |
| --- | --- | --- |
| 庞露 | 50 | 20 |
| 于蕊 | 50 | 20 |
| 李政 | 50 | 20 |
| 许晓伟 | 50 | 20 |
| 崔承武 | 50 | 20 |
| 焦子豪 | 50 | 20 |
| 测试设备 |  | 300 |
| 开发设备 |  | 500 |
| 水电费 |  |  |
| 储备 |  |  |

## Schedule

| ID | WBS | Task | Type | Duration | Start | Finish | Predecessors | Resources | Work | Cost |
| --- | --- | --- | --- | --- | --- | --- | --- | --- | --- | --- |
| 1 | 1 | **历史文献管理系统——** |  | 1d? | 2023-12-11 | 2023-12-11 |  |  | 3296h | 171,060 |
| 2 | 1.1 | **前端功能** |  | 1d? | 2023-12-11 | 2023-12-11 |  |  | 1424h | 73,180 |
| 3 | 1.1.1 | **用户** |  | 8d | 2023-11-20 | 2023-11-29 |  |  | 168h | 8,740 |
| 4 | 1.1.1.1 | **注册** |  | 5d | 2023-11-20 | 2023-11-24 |  |  | 40h | 2,080 |
| 5 | 1.1.1.1.1 | 设计注册界面 | manual | 1d | 2023-11-20 | 2023-11-20 |  | 于蕊 | 8h | 420 |
| 6 | 1.1.1.1.2 | 注册申请处理的编码 | manual | 2d | 2023-11-21 | 2023-11-22 | 5 | 崔承武 | 16h | 820 |
| 7 | 1.1.1.1.3 | 单元测试 | manual | 1d | 2023-11-23 | 2023-11-23 | 6 | 崔承武 | 8h | 420 |
| 8 | 1.1.1.1.4 | 文档编写 | manual | 1d | 2023-11-24 | 2023-11-24 | 7 | 庞露 | 8h | 420 |
| 9 | 1.1.1.2 | **登录** |  | 4d | 2023-11-22 | 2023-11-26 |  |  | 40h | 2,080 |
| 10 | 1.1.1.2.1 | 设计登录界面 | manual | 1d | 2023-11-22 | 2023-11-22 |  | 于蕊 | 8h | 420 |
| 11 | 1.1.1.2.2 | 登录界面编码 | manual | 2d | 2023-11-23 | 2023-11-24 | 10 | 崔承武 | 16h | 820 |
| 12 | 1.1.1.2.3 | 单元测试 | manual | 1d | 2023-11-25 | 2023-11-25 | 11 | 李政 | 8h | 420 |
| 13 | 1.1.1.2.4 | 文档编写 | manual | 1d | 2023-11-26 | 2023-11-26 | 12 | 庞露 | 8h | 420 |
| 14 | 1.1.1.3 | **登录验证码** |  | 2d | 2023-11-24 | 2023-11-27 |  |  | 88h | 4,580 |
| 15 | 1.1.1.3.1 | 设计登录验证码 | manual | 1d | 2023-11-24 | 2023-11-24 | 4, 9 | 于蕊; 测试设备; 崔承武; 焦子豪; 开发设备; 庞露; 李政; 水电费 [0.1%]; 许晓伟 | 64h | 3,320 |
| 16 | 1.1.1.3.2 | 引用第三方框架进行登录验证码编码 | manual | 1d | 2023-11-25 | 2023-11-25 | 15 | 崔承武 | 8h | 420 |
| 17 | 1.1.1.3.3 | 单元测试 | manual | 1d | 2023-11-26 | 2023-11-26 | 16 | 李政 | 8h | 420 |
| 18 | 1.1.1.3.4 | 文档编写 | manual | 1d | 2023-11-27 | 2023-11-27 | 17 | 庞露 | 8h | 420 |
| 19 | 1.1.2 | **视频** |  | 6d | 2023-11-27 | 2023-12-04 |  |  | 80h | 4,120 |
| 20 | 1.1.2.1 | 设计视频列表界面 | manual | 1d | 2023-11-27 | 2023-11-27 | 41 | 于蕊 | 8h | 420 |
| 21 | 1.1.2.2 | 视频列表界面编码 | manual | 4d | 2023-11-28 | 2023-12-01 | 20 | 焦子豪 | 32h | 1,620 |
| 22 | 1.1.2.3 | 设计视频详情界面 | manual | 1d | 2023-12-01 | 2023-12-01 | 21 | 于蕊 | 8h | 420 |
| 23 | 1.1.2.4 | 视频详情界面编码 | manual | 1d | 2023-12-02 | 2023-12-02 | 22 | 焦子豪 | 8h | 420 |
| 24 | 1.1.2.5 | 单元测试 | manual | 2d | 2023-12-02 | 2023-12-04 | 23 | 李政 | 16h | 820 |
| 25 | 1.1.2.6 | 文档编写 | manual | 1d | 2023-12-04 | 2023-12-04 | 24 | 庞露 | 8h | 420 |

| ID | WBS | Task | Type | Duration | Start | Finish | Predecessors | Resources | Work | Cost |
| --- | --- | --- | --- | --- | --- | --- | --- | --- | --- | --- |
| 26 | 1.1.3 | **图书** |  | 8d | 2023-11-27 | 2023-12-06 |  |  | 72h | 3,720 |
| 27 | 1.1.3.1 | 设计图书列表界面 | manual | 1d | 2023-11-28 | 2023-11-28 | 41 | 于蕊 | 8h | 420 |
| 28 | 1.1.3.2 | 图书列表界面编码 | manual | 3d | 2023-11-29 | 2023-12-01 | 27 | 李政 | 24h | 1,220 |
| 29 | 1.1.3.3 | 设计图书详情界面 | manual | 1d | 2023-12-02 | 2023-12-02 | 28 | 于蕊 | 8h | 420 |
| 30 | 1.1.3.4 | 图书详情界面编码 | manual | 1d | 2023-12-04 | 2023-12-04 | 29 | 李政 | 8h | 420 |
| 31 | 1.1.3.5 | 单元测试 | manual | 2d | 2023-12-05 | 2023-12-06 | 30 | 李政 | 16h | 820 |
| 32 | 1.1.3.6 | 文档编写 | manual | 1d | 2023-12-06 | 2023-12-06 | 31 | 庞露 | 8h | 420 |
| 33 | 1.1.4 | **档案** |  | 6d | 2023-11-26 | 2023-12-01 |  |  | 120h | 6,140 |
| 34 | 1.1.4.1 | 设计档案列表界面 | manual | 1d | 2023-11-26 | 2023-11-26 | 41 | 于蕊 | 8h | 420 |
| 35 | 1.1.4.2 | 档案列表界面编码 | manual | 4d | 2023-11-27 | 2023-11-30 | 34 | 许晓伟 | 32h | 1,620 |
| 36 | 1.1.4.3 | 设计档案详情界面 | manual | 1d | 2023-11-26 | 2023-11-26 |  | 于蕊 | 8h | 420 |
| 37 | 1.1.4.4 | 档案详情界面编码 | manual | 4d | 2023-11-27 | 2023-11-30 | 36 | 许晓伟 | 32h | 1,620 |
| 38 | 1.1.4.5 | 单元测试 | manual | 2d | 2023-12-01 | 2023-12-02 | 37 | 崔承武; 许晓伟 | 32h | 1,640 |
| 39 | 1.1.4.6 | 文档编写 | manual | 1d | 2023-12-03 | 2023-12-03 | 38 | 庞露 | 8h | 420 |
| 40 | 1.1.5 | **首页** |  | 7d | 2023-11-23 | 2023-12-01 |  |  | 200h | 10,180 |
| 41 | 1.1.5.1 | 设计首页界面 | manual | 3d | 2023-11-23 | 2023-11-25 |  | 于蕊; 庞露; 崔承武; 焦子豪; 李政; 许晓伟 | 144h | 7,320 |
| 42 | 1.1.5.2 | 首页编码 | manual | 5d | 2023-11-27 | 2023-12-01 | 41 | 崔承武 | 40h | 2,020 |
| 43 | 1.1.5.3 | 单元测试 | manual | 1d | 2023-12-02 | 2023-12-02 | 42 | 崔承武 | 8h | 420 |
| 44 | 1.1.5.4 | 文档编写 | manual | 1d | 2023-12-03 | 2023-12-03 | 43 | 庞露 | 8h | 420 |
| 45 | 1.1.6 | **音频** |  | 6d | 2023-11-27 | 2023-12-03 |  |  | 120h | 6,140 |
| 46 | 1.1.6.1 | 设计音频列表界面 | manual | 1d | 2023-11-27 | 2023-11-27 | 41 | 于蕊 | 8h | 420 |
| 47 | 1.1.6.2 | 音频列表界面编码 | manual | 4d | 2023-11-28 | 2023-12-01 | 46 | 崔承武 | 32h | 1,620 |
| 48 | 1.1.6.3 | 设计音频详情界面 | manual | 1d | 2023-11-26 | 2023-11-26 |  | 于蕊 | 8h | 420 |
| 49 | 1.1.6.4 | 音频详情界面编码 | manual | 4d | 2023-11-27 | 2023-11-30 | 48 | 焦子豪 | 32h | 1,620 |
| 50 | 1.1.6.5 | 单元测试 | manual | 2d | 2023-12-01 | 2023-12-02 | 49 | 崔承武; 李政 | 32h | 1,640 |
| 51 | 1.1.6.6 | 文档编写 | manual | 1d | 2023-12-03 | 2023-12-03 | 50 | 庞露 | 8h | 420 |

| ID | WBS | Task | Type | Duration | Start | Finish | Predecessors | Resources | Work | Cost |
| --- | --- | --- | --- | --- | --- | --- | --- | --- | --- | --- |
| 52 | 1.1.7 | **拓片** |  | 6d | 2023-11-27 | 2023-12-03 |  |  | 120h | 6,140 |
| 53 | 1.1.7.1 | 设计拓片列表界面 | manual | 1d | 2023-11-27 | 2023-11-27 | 41 | 于蕊 | 8h | 420 |
| 54 | 1.1.7.2 | 拓片列表界面编码 | manual | 4d | 2023-11-28 | 2023-12-01 | 53 | 许晓伟 | 32h | 1,620 |
| 55 | 1.1.7.3 | 设计拓片详情界面 | manual | 1d | 2023-11-26 | 2023-11-26 |  | 于蕊 | 8h | 420 |
| 56 | 1.1.7.4 | 拓片详情界面编码 | manual | 4d | 2023-11-27 | 2023-11-30 | 55 | 许晓伟 | 32h | 1,620 |
| 57 | 1.1.7.5 | 单元测试 | manual | 2d | 2023-12-01 | 2023-12-02 | 56 | 崔承武; 李政 | 32h | 1,640 |
| 58 | 1.1.7.6 | 文档编写 | manual | 1d | 2023-12-03 | 2023-12-03 | 57 | 庞露 | 8h | 420 |
| 59 | 1.1.8 | **期刊** |  | 7d | 2023-12-04 | 2023-12-12 |  |  | 136h | 7,100 |
| 60 | 1.1.8.1 | 设计期刊界面 | manual | 2d | 2023-12-04 | 2023-12-05 |  | 于蕊; 庞露 | 32h | 1,640 |
| 61 | 1.1.8.2 | 期刊文章详情页编码 | manual | 1d | 2023-12-06 | 2023-12-06 | 60 | 许晓伟; 崔承武; 焦子豪; 李政; 庞露; 于蕊 | 48h | 2,520 |
| 62 | 1.1.8.3 | 选择期刊日期页编码 | manual | 1d | 2023-12-07 | 2023-12-07 | 61 | 许晓伟 | 8h | 420 |
| 63 | 1.1.8.4 | 某期期刊详情页编码 | manual | 1d | 2023-12-08 | 2023-12-08 | 62 | 许晓伟 | 8h | 420 |
| 64 | 1.1.8.5 | 期刊文章列表页编码 | manual | 1d | 2023-12-09 | 2023-12-09 | 63 | 许晓伟 | 8h | 420 |
| 65 | 1.1.8.6 | 期刊列表页编码 | manual | 1d | 2023-12-10 | 2023-12-10 | 64 | 许晓伟 | 8h | 420 |
| 66 | 1.1.8.7 | 单元测试 | manual | 1d | 2023-12-11 | 2023-12-11 | 65 | 许晓伟 | 8h | 420 |
| 67 | 1.1.8.8 | 文档编写 | manual | 1d | 2023-12-12 | 2023-12-12 | 66 | 庞露; 于蕊 | 16h | 840 |
| 68 | 1.1.9 | **报纸** |  | 7d | 2023-12-04 | 2023-12-12 |  |  | 64h | 3,340 |
| 69 | 1.1.9.1 | 设计报纸报刊界面 | manual | 1d | 2023-12-04 | 2023-12-04 |  | 于蕊 | 8h | 420 |
| 70 | 1.1.9.2 | 报纸报刊列表页编码 | manual | 1d | 2023-12-05 | 2023-12-05 | 69 | 崔承武 | 8h | 420 |
| 71 | 1.1.9.3 | 报纸新闻列表页编码 | manual | 1d | 2023-12-06 | 2023-12-06 | 70 | 崔承武 | 8h | 420 |
| 72 | 1.1.9.4 | 报纸报刊期数查询编码 | manual | 1d | 2023-12-07 | 2023-12-07 | 71 | 崔承武 | 8h | 420 |
| 73 | 1.1.9.5 | 报纸新闻详情页编码 | manual | 1d | 2023-12-08 | 2023-12-08 | 72 | 崔承武 | 8h | 420 |
| 74 | 1.1.9.6 | 单元测试 | manual | 2d | 2023-12-09 | 2023-12-11 | 73 | 崔承武 | 16h | 820 |
| 75 | 1.1.9.7 | 文档编写 | manual | 1d | 2023-12-12 | 2023-12-12 | 74 | 庞露 | 8h | 420 |

| ID | WBS | Task | Type | Duration | Start | Finish | Predecessors | Resources | Work | Cost |
| --- | --- | --- | --- | --- | --- | --- | --- | --- | --- | --- |
| 76 | 1.1.10 | **收藏夹** |  | 6d | 2023-11-27 | 2023-12-02 |  |  | 56h | 2,940 |
| 77 | 1.1.10.1 | 设计收藏夹界面 | manual | 1d | 2023-11-27 | 2023-11-27 |  | 于蕊 | 8h | 420 |
| 78 | 1.1.10.2 | 添加收藏功能编码 | manual | 1d | 2023-11-28 | 2023-11-28 | 77 | 李政 | 8h | 420 |
| 79 | 1.1.10.3 | 详情页编码 | manual | 1d | 2023-11-29 | 2023-11-29 | 78 | 李政 | 8h | 420 |
| 80 | 1.1.10.4 | 删除收藏功能编码 | manual | 1d | 2023-11-29 | 2023-11-29 | 78 | 李政 | 8h | 420 |
| 81 | 1.1.10.5 | 用户收藏列表功能编码 | manual | 1d | 2023-11-30 | 2023-11-30 | 80 | 李政 | 8h | 420 |
| 82 | 1.1.10.6 | 单元测试 | manual | 1d | 2023-12-01 | 2023-12-01 | 81 | 李政 | 8h | 420 |
| 83 | 1.1.10.7 | 文档编写 | manual | 1d | 2023-12-02 | 2023-12-02 | 82 | 庞露 | 8h | 420 |
| 84 | 1.1.11 | **高级检索** |  | 17d | 2023-11-20 | 2023-12-12 |  |  | 224h | 11,280 |
| 85 | 1.1.11.1 | 于各个模块设计高级检索界面 | manual | 10d | 2023-11-20 | 2023-12-01 |  | 于蕊 | 80h | 4,020 |
| 86 | 1.1.11.2 | 高级检索编码 | manual | 16d | 2023-11-20 | 2023-12-10 |  | 焦子豪 | 128h | 6,420 |
| 87 | 1.1.11.3 | 单元测试 | manual | 1d | 2023-12-11 | 2023-12-11 | 86 | 焦子豪 | 8h | 420 |
| 88 | 1.1.11.4 | 文档编写 | manual | 1d | 2023-12-12 | 2023-12-12 | 87 | 庞露 | 8h | 420 |
| 89 | 1.1.12 | **个人主页** |  | 5d | 2023-11-28 | 2023-12-02 |  |  | 40h | 2,080 |
| 90 | 1.1.12.1 | 设计个人主页界面 | manual | 1d | 2023-11-28 | 2023-11-28 |  | 于蕊 | 8h | 420 |
| 91 | 1.1.12.2 | 个人主页编码 | manual | 1d | 2023-11-29 | 2023-11-29 | 90 | 焦子豪 | 8h | 420 |
| 92 | 1.1.12.3 | 单元测试 | manual | 1d | 2023-11-30 | 2023-11-30 | 91 | 焦子豪 | 8h | 420 |
| 93 | 1.1.12.4 | 文档编写 | manual | 2d | 2023-12-01 | 2023-12-02 | 92 | 庞露 | 16h | 820 |
| 94 | 1.1.13 | **关于我们** |  | 3d | 2023-11-29 | 2023-12-01 |  |  | 24h | 1,260 |
| 95 | 1.1.13.1 | 设计关于我们界面 | manual | 1d | 2023-11-29 | 2023-11-29 |  | 于蕊 | 8h | 420 |
| 96 | 1.1.13.2 | 关于我们编码 | manual | 1d | 2023-11-30 | 2023-11-30 | 95 | 庞露 | 8h | 420 |
| 97 | 1.1.13.3 | 文档编写 | manual | 1d | 2023-12-01 | 2023-12-01 | 96 | 庞露 | 8h | 420 |
| 98 | 1.2 | **后台功能** |  | 1d? | 2023-12-11 | 2023-12-11 |  |  | 1872h | 97,880 |
| 99 | 1.2.1 | **登录模块** |  | 1d? | 2023-12-11 | 2023-12-11 |  |  | 40h | 2,100 |
| 100 | 1.2.1.1 | **登录申请** |  | 12d | 2023-12-11 | 2023-12-26 |  |  | 40h | 2,100 |
| 101 | 1.2.1.1.1 | 构建管理员信息数据表 | manual | 1d | 2023-12-01 | 2023-12-01 |  | 庞露 | 8h | 420 |
| 102 | 1.2.1.1.2 | 设计登录申请界面 | manual | 1d | 2023-12-01 | 2023-12-01 |  | 于蕊 | 8h | 420 |
| 103 | 1.2.1.1.3 | 登录申请处理编码 | manual | 1d | 2023-12-14 | 2023-12-14 | 102 | 李政 | 8h | 420 |
| 104 | 1.2.1.1.4 | 单元测试 | manual | 1d | 2023-12-15 | 2023-12-15 | 103 | 焦子豪 | 8h | 420 |
| 105 | 1.2.1.1.5 | 文档编写 | manual | 1d | 2023-12-16 | 2023-12-16 | 104 | 庞露 | 8h | 420 |

| ID | WBS | Task | Type | Duration | Start | Finish | Predecessors | Resources | Work | Cost |
| --- | --- | --- | --- | --- | --- | --- | --- | --- | --- | --- |
| 106 | 1.2.2 | **内容模块** |  | 1d? | 2023-12-11 | 2023-12-11 |  |  | 1584h | 82,780 |
| 107 | 1.2.2.1 | **申请主页页面** |  | 1d? | 2023-12-11 | 2023-12-11 |  |  | 56h | 2,940 |
| 108 | 1.2.2.1.1 | 构建浏览信息数据表 | manual | 1d | 2023-12-02 | 2023-12-02 |  | 庞露; 李政 | 16h | 840 |
| 109 | 1.2.2.1.2 | 设计主页页面 | manual | 1d | 2023-12-02 | 2023-12-02 |  | 于蕊; 崔承武 | 16h | 840 |
| 110 | 1.2.2.1.3 | 主页申请处理编码 | manual | 1d | 2023-12-14 | 2023-12-14 | 109 | 许晓伟 | 8h | 420 |
| 111 | 1.2.2.1.4 | 单元测试 | manual | 1d | 2023-12-15 | 2023-12-15 | 110 | 庞露 | 8h | 420 |
| 112 | 1.2.2.1.5 | 文档编写 | manual | 1d | 2023-12-16 | 2023-12-16 | 111 | 于蕊 | 8h | 420 |
| 113 | 1.2.2.2 | **报刊模块** |  | 1d? | 2023-12-11 | 2023-12-11 |  |  | 320h | 16,620 |
| 114 | 1.2.2.2.1 | **报刊内容的新增** |  | 1d? | 2023-12-11 | 2023-12-11 |  |  | 152h | 7,920 |
| 115 | 1.2.2.2.1.1 | 构建报刊模块信息数据表 | manual | 1d | 2023-12-03 | 2023-12-03 |  | 崔承武; 庞露 | 16h | 840 |
| 116 | 1.2.2.2.1.2 | 设计录入报刊界面 | manual | 1d | 2023-12-03 | 2023-12-03 |  | 李政; 于蕊 | 16h | 840 |
| 117 | 1.2.2.2.1.3 | 录入报刊处理编码 | manual | 2d | 2023-12-14 | 2023-12-15 | 116 | 焦子豪 | 16h | 820 |
| 118 | 1.2.2.2.1.4 | 构建期号信息数据表 | manual | 1d | 2023-12-03 | 2023-12-03 |  | 崔承武; 庞露 | 16h | 840 |
| 119 | 1.2.2.2.1.5 | 设计录入期号界面 | manual | 1d | 2023-12-03 | 2023-12-03 |  | 李政; 于蕊 | 16h | 840 |
| 120 | 1.2.2.2.1.6 | 构建新闻信息数据表 | manual | 1d | 2023-12-03 | 2023-12-03 |  | 崔承武; 庞露 | 16h | 840 |
| 121 | 1.2.2.2.1.7 | 设计录入新闻界面 | manual | 1d | 2023-12-03 | 2023-12-03 |  | 李政; 于蕊 | 16h | 840 |
| 122 | 1.2.2.2.1.8 | 录入新闻处理编码 | manual | 2d | 2023-12-14 | 2023-12-15 | 119, 121 | 焦子豪 | 16h | 820 |
| 123 | 1.2.2.2.1.9 | 单元测试 | manual | 2d | 2023-12-16 | 2023-12-18 | 122 | 许晓伟 | 16h | 820 |
| 124 | 1.2.2.2.1.10 | 文档编写 | manual | 1d | 2023-12-18 | 2023-12-18 | 123 | 庞露 | 8h | 420 |
| 125 | 1.2.2.2.2 | **报刊内容的修改** |  | 1d? | 2023-12-11 | 2023-12-11 |  |  | 56h | 2,900 |
| 126 | 1.2.2.2.2.1 | 设计修改报刊界面 | manual | 1d | 2023-12-03 | 2023-12-03 |  | 崔承武; 于蕊 | 16h | 840 |
| 127 | 1.2.2.2.2.2 | 修改报刊处理编码 | manual | 2d | 2023-12-14 | 2023-12-15 | 126 | 崔承武 | 16h | 820 |
| 128 | 1.2.2.2.2.3 | 单元测试 | manual | 2d | 2023-12-16 | 2023-12-17 | 127 | 崔承武 | 16h | 820 |
| 129 | 1.2.2.2.2.4 | 文档编写 | manual | 1d | 2023-12-18 | 2023-12-18 | 128 | 庞露 | 8h | 420 |

| ID | WBS | Task | Type | Duration | Start | Finish | Predecessors | Resources | Work | Cost |
| --- | --- | --- | --- | --- | --- | --- | --- | --- | --- | --- |
| 130 | 1.2.2.2.3 | **报刊内容的发布** |  | 1d? | 2023-12-11 | 2023-12-11 |  |  | 56h | 2,900 |
| 131 | 1.2.2.2.3.1 | 设计发布报刊界面 | manual | 1d | 2023-12-03 | 2023-12-03 |  | 庞露; 于蕊 | 16h | 840 |
| 132 | 1.2.2.2.3.2 | 发布报刊处理编码 | manual | 2d | 2023-12-14 | 2023-12-15 | 131 | 李政 | 16h | 820 |
| 133 | 1.2.2.2.3.3 | 单元测试 | manual | 2d | 2023-12-16 | 2023-12-17 | 132 | 许晓伟 | 16h | 820 |
| 134 | 1.2.2.2.3.4 | 文档编写 | manual | 1d | 2023-12-18 | 2023-12-18 | 133 | 庞露 | 8h | 420 |
| 135 | 1.2.2.2.4 | **报刊内容的查看** |  | 1d? | 2023-12-11 | 2023-12-11 |  |  | 56h | 2,900 |
| 136 | 1.2.2.2.4.1 | 设计查看报刊界面 | manual | 1d | 2023-12-03 | 2023-12-03 |  | 庞露; 于蕊 | 16h | 840 |
| 137 | 1.2.2.2.4.2 | 查看报刊处理编码 | manual | 2d | 2023-12-14 | 2023-12-15 | 136 | 许晓伟 | 16h | 820 |
| 138 | 1.2.2.2.4.3 | 单元测试 | manual | 2d | 2023-12-16 | 2023-12-17 | 137 | 李政 | 16h | 820 |
| 139 | 1.2.2.2.4.4 | 文档编写 | manual | 1d | 2023-12-18 | 2023-12-18 | 138 | 于蕊 | 8h | 420 |
| 140 | 1.2.2.3 | **期刊模块** |  | 1d? | 2023-12-11 | 2023-12-11 |  |  | 280h | 14,620 |
| 141 | 1.2.2.3.1 | **期刊内容的新增** |  | 1d? | 2023-12-11 | 2023-12-11 |  |  | 136h | 7,100 |
| 142 | 1.2.2.3.1.1 | 构建期刊模块信息数据表 | manual | 1d | 2023-12-04 | 2023-12-04 |  | 崔承武; 庞露 | 16h | 840 |
| 143 | 1.2.2.3.1.2 | 设计录入期刊界面 | manual | 1d | 2023-12-04 | 2023-12-04 |  | 李政; 于蕊 | 16h | 840 |
| 144 | 1.2.2.3.1.3 | 录入期刊处理的编码 | manual | 2d | 2023-12-18 | 2023-12-19 | 143 | 崔承武 | 16h | 820 |
| 145 | 1.2.2.3.1.4 | 构建期号信息数据表 | manual | 1d | 2023-12-04 | 2023-12-04 |  | 庞露 | 8h | 420 |
| 146 | 1.2.2.3.1.5 | 设计录入期号界面 | manual | 1d | 2023-12-04 | 2023-12-04 |  | 于蕊 | 8h | 420 |
| 147 | 1.2.2.3.1.6 | 例如期号处理编码 | manual | 2d | 2023-12-18 | 2023-12-19 | 146 | 焦子豪 | 16h | 820 |
| 148 | 1.2.2.3.1.7 | 构建文章信息数据表 | manual | 1d | 2023-12-04 | 2023-12-04 |  | 庞露; 于蕊 | 16h | 840 |
| 149 | 1.2.2.3.1.8 | 设计录入文章界面 | manual | 1d | 2023-12-04 | 2023-12-04 |  | 庞露; 于蕊 | 16h | 840 |
| 150 | 1.2.2.3.1.9 | 录入文章处理的代码 | manual | 1d | 2023-12-20 | 2023-12-20 | 149 | 焦子豪 | 8h | 420 |
| 151 | 1.2.2.3.1.10 | 单元测试 | manual | 1d | 2023-12-21 | 2023-12-21 | 150 | 许晓伟 | 8h | 420 |
| 152 | 1.2.2.3.1.11 | 文档编写 | manual | 1d | 2023-12-22 | 2023-12-22 | 151 | 于蕊 | 8h | 420 |
| 153 | 1.2.2.3.2 | **报刊内容的修改** |  | 1d? | 2023-12-11 | 2023-12-11 |  |  | 48h | 2,500 |
| 154 | 1.2.2.3.2.1 | 设计修改报刊界面 | manual | 1d | 2023-12-04 | 2023-12-04 |  | 庞露; 于蕊 | 16h | 840 |
| 155 | 1.2.2.3.2.2 | 修改报刊处理编码 | manual | 2d | 2023-12-18 | 2023-12-19 | 154 | 李政 | 16h | 820 |
| 156 | 1.2.2.3.2.3 | 单元测试 | manual | 1d | 2023-12-20 | 2023-12-20 | 155 | 许晓伟 | 8h | 420 |
| 157 | 1.2.2.3.2.4 | 文档编写 | manual | 1d | 2023-12-21 | 2023-12-21 | 156 | 庞露 | 8h | 420 |

| ID | WBS | Task | Type | Duration | Start | Finish | Predecessors | Resources | Work | Cost |
| --- | --- | --- | --- | --- | --- | --- | --- | --- | --- | --- |
| 158 | 1.2.2.3.3 | **报刊内容的发布** |  | 1d? | 2023-12-11 | 2023-12-11 |  |  | 48h | 2,520 |
| 159 | 1.2.2.3.3.1 | 设计发布报刊界面 | manual | 1d | 2023-12-04 | 2023-12-04 |  | 李政; 庞露; 于蕊 | 24h | 1,260 |
| 160 | 1.2.2.3.3.2 | 发布报刊处理编码 | manual | 1d | 2023-12-18 | 2023-12-18 | 159 | 李政 | 8h | 420 |
| 161 | 1.2.2.3.3.3 | 单元测试 | manual | 1d | 2023-12-19 | 2023-12-19 | 160 | 许晓伟 | 8h | 420 |
| 162 | 1.2.2.3.3.4 | 文档编写 | manual | 1d | 2023-12-20 | 2023-12-20 | 161 | 于蕊 | 8h | 420 |
| 163 | 1.2.2.3.4 | **报刊内容的查看** |  | 1d? | 2023-12-11 | 2023-12-11 |  |  | 48h | 2,500 |
| 164 | 1.2.2.3.4.1 | 设计查看报刊界面 | manual | 1d | 2023-12-04 | 2023-12-04 |  | 崔承武; 于蕊 | 16h | 840 |
| 165 | 1.2.2.3.4.2 | 查看报刊处理编码 | manual | 2d | 2023-12-18 | 2023-12-19 | 164 | 焦子豪 | 16h | 820 |
| 166 | 1.2.2.3.4.3 | 单元测试 | manual | 1d | 2023-12-20 | 2023-12-20 | 165 | 崔承武 | 8h | 420 |
| 167 | 1.2.2.3.4.4 | 文档编写 | manual | 1d | 2023-12-20 | 2023-12-20 | 166 | 庞露 | 8h | 420 |
| 168 | 1.2.2.4 | **档案模块** |  | 1d? | 2023-12-11 | 2023-12-11 |  |  | 152h | 7,980 |
| 169 | 1.2.2.4.1 | **档案内容的新增** |  | 1d? | 2023-12-11 | 2023-12-11 |  |  | 56h | 2,940 |
| 170 | 1.2.2.4.1.1 | 构建档案模块信息数据表 | manual | 1d | 2023-12-05 | 2023-12-05 |  | 庞露; 于蕊 | 16h | 840 |
| 171 | 1.2.2.4.1.2 | 设计录入档案界面 | manual | 1d | 2023-12-05 | 2023-12-05 |  | 李政; 于蕊 | 16h | 840 |
| 172 | 1.2.2.4.1.3 | 录入档案处理编码 | manual | 1d | 2023-12-21 | 2023-12-21 | 171 | 崔承武 | 8h | 420 |
| 173 | 1.2.2.4.1.4 | 单元测试 | manual | 1d | 2023-12-22 | 2023-12-22 | 172 | 崔承武 | 8h | 420 |
| 174 | 1.2.2.4.1.5 | 文档编写 | manual | 1d | 2023-12-22 | 2023-12-22 | 173 | 庞露 | 8h | 420 |
| 175 | 1.2.2.4.2 | **档案内容的修改** |  | 1d? | 2023-12-11 | 2023-12-11 |  |  | 32h | 1,680 |
| 176 | 1.2.2.4.2.1 | 设计修改档案界面 | manual | 1d | 2023-12-05 | 2023-12-05 |  | 庞露 | 8h | 420 |
| 177 | 1.2.2.4.2.2 | 修改档案处理编码 | manual | 1d | 2023-12-20 | 2023-12-20 | 176 | 李政 | 8h | 420 |
| 178 | 1.2.2.4.2.3 | 单元测试 | manual | 1d | 2023-12-21 | 2023-12-21 | 177 | 李政 | 8h | 420 |
| 179 | 1.2.2.4.2.4 | 文档编写 | manual | 1d | 2023-12-22 | 2023-12-22 | 178 | 于蕊 | 8h | 420 |
| 180 | 1.2.2.4.3 | **档案内容的发布** |  | 1d? | 2023-12-11 | 2023-12-11 |  |  | 32h | 1,680 |
| 181 | 1.2.2.4.3.1 | 设计发布档案界面 | manual | 1d | 2023-12-05 | 2023-12-05 |  | 于蕊 | 8h | 420 |
| 182 | 1.2.2.4.3.2 | 发布档案处理编码 | manual | 1d | 2023-12-21 | 2023-12-21 | 181 | 焦子豪 | 8h | 420 |
| 183 | 1.2.2.4.3.3 | 单元测试 | manual | 1d | 2023-12-22 | 2023-12-22 | 182 | 焦子豪 | 8h | 420 |
| 184 | 1.2.2.4.3.4 | 文档编写 | manual | 1d | 2023-12-23 | 2023-12-23 | 183 | 于蕊 | 8h | 420 |

| ID | WBS | Task | Type | Duration | Start | Finish | Predecessors | Resources | Work | Cost |
| --- | --- | --- | --- | --- | --- | --- | --- | --- | --- | --- |
| 185 | 1.2.2.4.4 | **档案内容的查看** |  | 1d? | 2023-12-11 | 2023-12-11 |  |  | 32h | 1,680 |
| 186 | 1.2.2.4.4.1 | 设计查看档案界面 | manual | 1d | 2023-12-05 | 2023-12-05 |  | 李政 | 8h | 420 |
| 187 | 1.2.2.4.4.2 | 查看档案处理编码 | manual | 1d | 2023-12-22 | 2023-12-22 | 186 | 李政 | 8h | 420 |
| 188 | 1.2.2.4.4.3 | 单元测试 | manual | 1d | 2023-12-23 | 2023-12-23 | 187 | 崔承武 | 8h | 420 |
| 189 | 1.2.2.4.4.4 | 文档编写 | manual | 1d | 2023-12-23 | 2023-12-23 | 188 | 庞露 | 8h | 420 |
| 190 | 1.2.2.5 | **视频模块** |  | 1d? | 2023-12-11 | 2023-12-11 |  |  | 176h | 9,160 |
| 191 | 1.2.2.5.1 | **视频内容的新增** |  | 1d? | 2023-12-11 | 2023-12-11 |  |  | 56h | 2,920 |
| 192 | 1.2.2.5.1.1 | 构建视频模块信息数据表 | manual | 1d | 2023-12-06 | 2023-12-06 |  | 庞露 | 8h | 420 |
| 193 | 1.2.2.5.1.2 | 设计录入视频界面 | manual | 1d | 2023-12-06 | 2023-12-06 |  | 于蕊; 李政 | 16h | 840 |
| 194 | 1.2.2.5.1.3 | 录入视频处理编码 | manual | 2d | 2023-12-22 | 2023-12-23 | 193 | 许晓伟 | 16h | 820 |
| 195 | 1.2.2.5.1.4 | 单元测试 | manual | 1d | 2023-12-23 | 2023-12-23 | 194 | 焦子豪 | 8h | 420 |
| 196 | 1.2.2.5.1.5 | 文档编写 | manual | 1d | 2023-12-24 | 2023-12-24 | 195 | 于蕊 | 8h | 420 |
| 197 | 1.2.2.5.2 | **视频内容的修改** |  | 1d? | 2023-12-11 | 2023-12-11 |  |  | 40h | 2,080 |
| 198 | 1.2.2.5.2.1 | 设计修改视频界面 | manual | 1d | 2023-12-06 | 2023-12-06 |  | 于蕊 | 8h | 420 |
| 199 | 1.2.2.5.2.2 | 修改视频处理编码 | manual | 2d | 2023-12-23 | 2023-12-24 | 198 | 李政 | 16h | 820 |
| 200 | 1.2.2.5.2.3 | 单元测试 | manual | 1d | 2023-12-24 | 2023-12-24 | 199 | 崔承武 | 8h | 420 |
| 201 | 1.2.2.5.2.4 | 文档编写 | manual | 1d | 2023-12-24 | 2023-12-24 | 200 | 庞露 | 8h | 420 |
| 202 | 1.2.2.5.3 | **视频内容的发布** |  | 1d? | 2023-12-11 | 2023-12-11 |  |  | 40h | 2,080 |
| 203 | 1.2.2.5.3.1 | 设计发布视频界面 | manual | 1d | 2023-12-06 | 2023-12-06 |  | 庞露 | 8h | 420 |
| 204 | 1.2.2.5.3.2 | 发布视频处理编码 | manual | 2d | 2023-12-24 | 2023-12-25 | 203 | 焦子豪 | 16h | 820 |
| 205 | 1.2.2.5.3.3 | 单元测试 | manual | 1d | 2023-12-26 | 2023-12-26 | 204 | 焦子豪 | 8h | 420 |
| 206 | 1.2.2.5.3.4 | 文档编写 | manual | 1d | 2023-12-25 | 2023-12-25 | 205 | 于蕊 | 8h | 420 |
| 207 | 1.2.2.5.4 | **视频内容的查看** |  | 1d? | 2023-12-11 | 2023-12-11 |  |  | 40h | 2,080 |
| 208 | 1.2.2.5.4.1 | 设计查看视频界面 | manual | 1d | 2023-12-06 | 2023-12-06 |  | 崔承武 | 8h | 420 |
| 209 | 1.2.2.5.4.2 | 查看视频处理编码 | manual | 2d | 2023-12-24 | 2023-12-25 | 208 | 许晓伟 | 16h | 820 |
| 210 | 1.2.2.5.4.3 | 单元测试 | manual | 1d | 2023-12-25 | 2023-12-25 | 209 | 李政 | 8h | 420 |
| 211 | 1.2.2.5.4.4 | 文档编写 | manual | 1d | 2023-12-25 | 2023-12-25 | 210 | 庞露 | 8h | 420 |

| ID | WBS | Task | Type | Duration | Start | Finish | Predecessors | Resources | Work | Cost |
| --- | --- | --- | --- | --- | --- | --- | --- | --- | --- | --- |
| 212 | 1.2.2.6 | **拓片模块** |  | 1d? | 2023-12-11 | 2023-12-11 |  |  | 160h | 8,380 |
| 213 | 1.2.2.6.1 | **拓片内容的新增** |  | 1d? | 2023-12-11 | 2023-12-11 |  |  | 56h | 2,920 |
| 214 | 1.2.2.6.1.1 | 构建拓片模块信息数据表 | manual | 1d | 2023-12-07 | 2023-12-07 |  | 庞露 | 8h | 420 |
| 215 | 1.2.2.6.1.2 | 设计录入拓片界面 | manual | 1d | 2023-12-07 | 2023-12-07 |  | 李政; 庞露 | 16h | 840 |
| 216 | 1.2.2.6.1.3 | 录入拓片处理编码 | manual | 2d | 2023-12-25 | 2023-12-26 | 215 | 崔承武 | 16h | 820 |
| 217 | 1.2.2.6.1.4 | 单元测试 | manual | 1d | 2023-12-26 | 2023-12-26 | 216 | 崔承武 | 8h | 420 |
| 218 | 1.2.2.6.1.5 | 文档编写 | manual | 1d | 2023-12-26 | 2023-12-26 | 217 | 于蕊 | 8h | 420 |
| 219 | 1.2.2.6.2 | **拓片内容的修改** |  | 1d? | 2023-12-11 | 2023-12-11 |  |  | 32h | 1,680 |
| 220 | 1.2.2.6.2.1 | 设计修改拓片界面 | manual | 1d | 2023-12-07 | 2023-12-07 |  | 李政 | 8h | 420 |
| 221 | 1.2.2.6.2.2 | 修改拓片处理编码 | manual | 1d | 2023-12-26 | 2023-12-26 | 220 | 焦子豪 | 8h | 420 |
| 222 | 1.2.2.6.2.3 | 单元测试 | manual | 1d | 2023-12-26 | 2023-12-26 | 221 | 焦子豪 | 8h | 420 |
| 223 | 1.2.2.6.2.4 | 文档编写 | manual | 1d | 2023-12-26 | 2023-12-26 | 222 | 庞露 | 8h | 420 |
| 224 | 1.2.2.6.3 | **拓片内容的发布** |  | 1d? | 2023-12-11 | 2023-12-11 |  |  | 40h | 2,100 |
| 225 | 1.2.2.6.3.1 | 设计发布拓片界面 | manual | 1d | 2023-12-07 | 2023-12-07 |  | 李政; 庞露 | 16h | 840 |
| 226 | 1.2.2.6.3.2 | 发布拓片处理编码 | manual | 1d | 2023-12-26 | 2023-12-26 | 225 | 许晓伟 | 8h | 420 |
| 227 | 1.2.2.6.3.3 | 单元测试 | manual | 1d | 2023-12-27 | 2023-12-27 | 226 | 崔承武 | 8h | 420 |
| 228 | 1.2.2.6.3.4 | 文档编写 | manual | 1d | 2023-12-27 | 2023-12-27 | 227 | 于蕊 | 8h | 420 |
| 229 | 1.2.2.6.4 | **拓片内容的查看** |  | 1d? | 2023-12-11 | 2023-12-11 |  |  | 32h | 1,680 |
| 230 | 1.2.2.6.4.1 | 设计查看拓片界面 | manual | 1d | 2023-12-07 | 2023-12-07 |  | 于蕊 | 8h | 420 |
| 231 | 1.2.2.6.4.2 | 查看拓片处理编码 | manual | 1d | 2023-12-26 | 2023-12-26 | 230 | 李政 | 8h | 420 |
| 232 | 1.2.2.6.4.3 | 单元测试 | manual | 1d | 2023-12-27 | 2023-12-27 | 231 | 李政 | 8h | 420 |
| 233 | 1.2.2.6.4.4 | 文档编写 | manual | 1d | 2023-12-27 | 2023-12-27 | 232 | 庞露 | 8h | 420 |
| 234 | 1.2.2.7 | **图片模块** |  | 1d? | 2023-12-11 | 2023-12-11 |  |  | 144h | 7,560 |
| 235 | 1.2.2.7.1 | **图片内容的新增** |  | 1d? | 2023-12-11 | 2023-12-11 |  |  | 48h | 2,520 |
| 236 | 1.2.2.7.1.1 | 构建图片模块信息数据表 | manual | 1d | 2023-12-08 | 2023-12-08 |  | 庞露; 许晓伟 | 16h | 840 |
| 237 | 1.2.2.7.1.2 | 设计录入图片界面 | manual | 1d | 2023-12-08 | 2023-12-08 |  | 于蕊 | 8h | 420 |
| 238 | 1.2.2.7.1.3 | 录入图片处理编码 | manual | 1d | 2023-12-27 | 2023-12-27 | 237 | 焦子豪 | 8h | 420 |
| 239 | 1.2.2.7.1.4 | 单元测试 | manual | 1d | 2023-12-27 | 2023-12-27 | 238 | 焦子豪 | 8h | 420 |
| 240 | 1.2.2.7.1.5 | 文档编写 | manual | 1d | 2023-12-27 | 2023-12-27 | 239 | 庞露 | 8h | 420 |

| ID | WBS | Task | Type | Duration | Start | Finish | Predecessors | Resources | Work | Cost |
| --- | --- | --- | --- | --- | --- | --- | --- | --- | --- | --- |
| 241 | 1.2.2.7.2 | **图片内容的修改** |  | 1d? | 2023-12-11 | 2023-12-11 |  |  | 32h | 1,680 |
| 242 | 1.2.2.7.2.1 | 设计修改图片界面 | manual | 1d | 2023-12-08 | 2023-12-08 |  | 庞露 | 8h | 420 |
| 243 | 1.2.2.7.2.2 | 修改图片处理编码 | manual | 1d | 2023-12-27 | 2023-12-27 | 242 | 许晓伟 | 8h | 420 |
| 244 | 1.2.2.7.2.3 | 单元测试 | manual | 1d | 2023-12-28 | 2023-12-28 | 243 | 许晓伟 | 8h | 420 |
| 245 | 1.2.2.7.2.4 | 文档编写 | manual | 1d | 2023-12-28 | 2023-12-28 | 244 | 于蕊 | 8h | 420 |
| 246 | 1.2.2.7.3 | **图片内容的发布** |  | 1d? | 2023-12-11 | 2023-12-11 |  |  | 32h | 1,680 |
| 247 | 1.2.2.7.3.1 | 设计发布图片界面 | manual | 1d | 2023-12-08 | 2023-12-08 |  | 于蕊 | 8h | 420 |
| 248 | 1.2.2.7.3.2 | 发布图片处理编码 | manual | 1d | 2023-12-28 | 2023-12-28 | 247 | 崔承武 | 8h | 420 |
| 249 | 1.2.2.7.3.3 | 单元测试 | manual | 1d | 2023-12-28 | 2023-12-28 | 248 | 崔承武 | 8h | 420 |
| 250 | 1.2.2.7.3.4 | 文档编写 | manual | 1d | 2023-12-28 | 2023-12-28 | 249 | 庞露 | 8h | 420 |
| 251 | 1.2.2.7.4 | **图片内容的查看** |  | 1d? | 2023-12-11 | 2023-12-11 |  |  | 32h | 1,680 |
| 252 | 1.2.2.7.4.1 | 设计查看图片界面 | manual | 1d | 2023-12-08 | 2023-12-08 |  | 于蕊 | 8h | 420 |
| 253 | 1.2.2.7.4.2 | 查看图片处理编码 | manual | 1d | 2023-12-28 | 2023-12-28 | 252 | 李政 | 8h | 420 |
| 254 | 1.2.2.7.4.3 | 单元测试 | manual | 1d | 2023-12-28 | 2023-12-28 | 253 | 焦子豪 | 8h | 420 |
| 255 | 1.2.2.7.4.4 | 文档编写 | manual | 1d | 2023-12-28 | 2023-12-28 | 254 | 庞露 | 8h | 420 |
| 256 | 1.2.2.8 | **图书模块** |  | 1d? | 2023-12-11 | 2023-12-11 |  |  | 144h | 7,560 |
| 257 | 1.2.2.8.1 | **图书内容的新增** |  | 1d? | 2023-12-11 | 2023-12-11 |  |  | 48h | 2,520 |
| 258 | 1.2.2.8.1.1 | 构建图书模块信息数据表 | manual | 1d | 2023-12-09 | 2023-12-09 |  | 崔承武; 庞露 | 16h | 840 |
| 259 | 1.2.2.8.1.2 | 设计录入图书界面 | manual | 1d | 2023-12-09 | 2023-12-09 |  | 崔承武 | 8h | 420 |
| 260 | 1.2.2.8.1.3 | 录入图书处理编码 | manual | 1d | 2023-12-29 | 2023-12-29 | 259 | 崔承武 | 8h | 420 |
| 261 | 1.2.2.8.1.4 | 单元测试 | manual | 1d | 2023-12-29 | 2023-12-29 | 260 | 崔承武 | 8h | 420 |
| 262 | 1.2.2.8.1.5 | 文档编写 | manual | 1d | 2023-12-29 | 2023-12-29 | 261 | 于蕊 | 8h | 420 |
| 263 | 1.2.2.8.2 | **图书内容的修改** |  | 1d? | 2023-12-11 | 2023-12-11 |  |  | 32h | 1,680 |
| 264 | 1.2.2.8.2.1 | 设计修改图书界面 | manual | 1d | 2023-12-09 | 2023-12-09 |  | 于蕊 | 8h | 420 |
| 265 | 1.2.2.8.2.2 | 修改图书处理编码 | manual | 1d | 2023-12-29 | 2023-12-29 | 264 | 李政 | 8h | 420 |
| 266 | 1.2.2.8.2.3 | 单元测试 | manual | 1d | 2023-12-29 | 2023-12-29 | 265 | 李政 | 8h | 420 |
| 267 | 1.2.2.8.2.4 | 文档编写 | manual | 1d | 2023-12-29 | 2023-12-29 | 266 | 庞露 | 8h | 420 |

| ID | WBS | Task | Type | Duration | Start | Finish | Predecessors | Resources | Work | Cost |
| --- | --- | --- | --- | --- | --- | --- | --- | --- | --- | --- |
| 268 | 1.2.2.8.3 | **图书内容的发布** |  | 1d? | 2023-12-11 | 2023-12-11 |  |  | 32h | 1,680 |
| 269 | 1.2.2.8.3.1 | 设计发布图书界面 | manual | 1d | 2023-12-09 | 2023-12-09 |  | 于蕊 | 8h | 420 |
| 270 | 1.2.2.8.3.2 | 发布图书处理编码 | manual | 1d | 2023-12-29 | 2023-12-29 | 269 | 许晓伟 | 8h | 420 |
| 271 | 1.2.2.8.3.3 | 单元测试 | manual | 1d | 2023-12-29 | 2023-12-29 | 270 | 许晓伟 | 8h | 420 |
| 272 | 1.2.2.8.3.4 | 文档编写 | manual | 1d | 2023-12-29 | 2023-12-29 | 271 | 庞露 | 8h | 420 |
| 273 | 1.2.2.8.4 | **图书内容的查看** |  | 1d? | 2023-12-11 | 2023-12-11 |  |  | 32h | 1,680 |
| 274 | 1.2.2.8.4.1 | 设计查看图书界面 | manual | 1d | 2023-12-09 | 2023-12-09 |  | 于蕊 | 8h | 420 |
| 275 | 1.2.2.8.4.2 | 查看图书处理编码 | manual | 1d | 2023-12-29 | 2023-12-29 | 274 | 焦子豪 | 8h | 420 |
| 276 | 1.2.2.8.4.3 | 单元测试 | manual | 1d | 2023-12-29 | 2023-12-29 | 275 | 焦子豪 | 8h | 420 |
| 277 | 1.2.2.8.4.4 | 文档编写 | manual | 1d | 2023-12-29 | 2023-12-29 | 276 | 庞露 | 8h | 420 |
| 278 | 1.2.2.9 | **音频模块** |  | 1d? | 2023-12-11 | 2023-12-11 |  |  | 152h | 7,960 |
| 279 | 1.2.2.9.1 | **音频内容的新增** |  | 1d? | 2023-12-11 | 2023-12-11 |  |  | 48h | 2,520 |
| 280 | 1.2.2.9.1.1 | 构建音频模块信息数据表 | manual | 1d | 2023-12-10 | 2023-12-10 |  | 庞露 | 8h | 420 |
| 281 | 1.2.2.9.1.2 | 设计录入音频界面 | manual | 1d | 2023-12-10 | 2023-12-10 |  | 李政; 于蕊 | 16h | 840 |
| 282 | 1.2.2.9.1.3 | 录入音频处理编码 | manual | 1d | 2023-12-23 | 2023-12-23 | 281 | 许晓伟 | 8h | 420 |
| 283 | 1.2.2.9.1.4 | 单元测试 | manual | 1d | 2023-12-23 | 2023-12-23 | 282 | 焦子豪 | 8h | 420 |
| 284 | 1.2.2.9.1.5 | 文档编写 | manual | 1d | 2023-12-24 | 2023-12-24 | 283 | 于蕊 | 8h | 420 |
| 285 | 1.2.2.9.2 | **音频内容的修改** |  | 1d? | 2023-12-11 | 2023-12-11 |  |  | 40h | 2,080 |
| 286 | 1.2.2.9.2.1 | 设计修改音频界面 | manual | 1d | 2023-12-10 | 2023-12-10 |  | 于蕊 | 8h | 420 |
| 287 | 1.2.2.9.2.2 | 修改音频处理编码 | manual | 2d | 2023-12-23 | 2023-12-24 | 286 | 李政 | 16h | 820 |
| 288 | 1.2.2.9.2.3 | 单元测试 | manual | 1d | 2023-12-24 | 2023-12-24 | 287 | 崔承武 | 8h | 420 |
| 289 | 1.2.2.9.2.4 | 文档编写 | manual | 1d | 2023-12-24 | 2023-12-24 | 288 | 庞露 | 8h | 420 |
| 290 | 1.2.2.9.3 | **音频内容的发布** |  | 1d? | 2023-12-11 | 2023-12-11 |  |  | 32h | 1,680 |
| 291 | 1.2.2.9.3.1 | 设计发布音频界面 | manual | 1d | 2023-12-10 | 2023-12-10 |  | 庞露 | 8h | 420 |
| 292 | 1.2.2.9.3.2 | 发布音频处理编码 | manual | 1d | 2023-12-24 | 2023-12-24 | 291 | 焦子豪 | 8h | 420 |
| 293 | 1.2.2.9.3.3 | 单元测试 | manual | 1d | 2023-12-25 | 2023-12-25 | 292 | 焦子豪 | 8h | 420 |
| 294 | 1.2.2.9.3.4 | 文档编写 | manual | 1d | 2023-12-25 | 2023-12-25 | 293 | 于蕊 | 8h | 420 |

| ID | WBS | Task | Type | Duration | Start | Finish | Predecessors | Resources | Work | Cost |
| --- | --- | --- | --- | --- | --- | --- | --- | --- | --- | --- |
| 295 | 1.2.2.9.4 | **音频内容的查看** |  | 1d? | 2023-12-11 | 2023-12-11 |  |  | 32h | 1,680 |
| 296 | 1.2.2.9.4.1 | 设计查看音频界面 | manual | 1d | 2023-12-10 | 2023-12-10 |  | 崔承武 | 8h | 420 |
| 297 | 1.2.2.9.4.2 | 查看音频处理编码 | manual | 1d | 2023-12-24 | 2023-12-24 | 296 | 许晓伟 | 8h | 420 |
| 298 | 1.2.2.9.4.3 | 单元测试 | manual | 1d | 2023-12-25 | 2023-12-25 | 297 | 李政 | 8h | 420 |
| 299 | 1.2.2.9.4.4 | 文档编写 | manual | 1d | 2023-12-25 | 2023-12-25 | 298 | 庞露 | 8h | 420 |
| 300 | 1.2.3 | **管理模块** |  | 1d? | 2023-12-11 | 2023-12-11 |  |  | 144h | 7,540 |
| 301 | 1.2.3.1 | **查看所有用户** |  | 1d? | 2023-12-11 | 2023-12-11 |  |  | 40h | 2,100 |
| 302 | 1.2.3.1.1 | 构建用户信息数据表 | manual | 1d | 2023-12-11 | 2023-12-11 |  | 庞露 | 8h | 420 |
| 303 | 1.2.3.1.2 | 设计查看所有用户申请界面 | manual | 1d | 2023-12-11 | 2023-12-11 |  | 于蕊 | 8h | 420 |
| 304 | 1.2.3.1.3 | 查看用户申请处理编码 | manual | 1d | 2023-12-29 | 2023-12-29 | 303 | 崔承武 | 8h | 420 |
| 305 | 1.2.3.1.4 | 单元测试 | manual | 1d | 2023-12-29 | 2023-12-29 | 304 | 崔承武 | 8h | 420 |
| 306 | 1.2.3.1.5 | 文档编写 | manual | 1d | 2023-12-30 | 2023-12-30 | 305 | 庞露 | 8h | 420 |
| 307 | 1.2.3.2 | **查看用户个人信息** |  | 1d? | 2023-12-11 | 2023-12-11 |  |  | 32h | 1,680 |
| 308 | 1.2.3.2.1 | 设计查看用户个人信息申请界面 | manual | 1d | 2023-12-11 | 2023-12-11 |  | 于蕊 | 8h | 420 |
| 309 | 1.2.3.2.2 | 查看用户个人信息申请处理编码 | manual | 1d | 2023-12-29 | 2023-12-29 | 308 | 李政 | 8h | 420 |
| 310 | 1.2.3.2.3 | 单元测试 | manual | 1d | 2023-12-29 | 2023-12-29 | 309 | 李政 | 8h | 420 |
| 311 | 1.2.3.2.4 | 文档编写 | manual | 1d | 2023-12-30 | 2023-12-30 | 310 | 于蕊 | 8h | 420 |
| 312 | 1.2.3.3 | **修改用户信息** |  | 1d? | 2023-12-11 | 2023-12-11 |  |  | 40h | 2,080 |
| 313 | 1.2.3.3.1 | 设计修改用户申请界面 | manual | 1d | 2023-12-11 | 2023-12-11 |  | 于蕊 | 8h | 420 |
| 314 | 1.2.3.3.2 | 修改用户申请处理编码 | manual | 2d | 2023-12-29 | 2023-12-30 | 313 | 李政 | 16h | 820 |
| 315 | 1.2.3.3.3 | 单元测试 | manual | 1d | 2023-12-30 | 2023-12-30 | 314 | 李政 | 8h | 420 |
| 316 | 1.2.3.3.4 | 文档编写 | manual | 1d | 2023-12-30 | 2023-12-30 | 315 | 于蕊 | 8h | 420 |
| 317 | 1.2.3.4 | **添加用户信息** |  | 1d? | 2023-12-11 | 2023-12-11 |  |  | 32h | 1,680 |
| 318 | 1.2.3.4.1 | 设计添加用户申请界面 | manual | 1d | 2023-12-11 | 2023-12-11 |  | 于蕊 | 8h | 420 |
| 319 | 1.2.3.4.2 | 添加用户申请处理编码 | manual | 1d | 2023-12-29 | 2023-12-29 | 318 | 焦子豪 | 8h | 420 |
| 320 | 1.2.3.4.3 | 单元测试 | manual | 1d | 2023-12-30 | 2023-12-30 | 319 | 焦子豪 | 8h | 420 |
| 321 | 1.2.3.4.4 | 文档编写 | manual | 1d | 2023-12-30 | 2023-12-30 | 320 | 于蕊 | 8h | 420 |

| ID | WBS | Task | Type | Duration | Start | Finish | Predecessors | Resources | Work | Cost |
| --- | --- | --- | --- | --- | --- | --- | --- | --- | --- | --- |
| 322 | 1.2.4 | **反馈模块** |  | 1d? | 2023-12-11 | 2023-12-11 |  |  | 104h | 5,460 |
| 323 | 1.2.4.1 | **查看所有反馈** |  | 1d? | 2023-12-11 | 2023-12-11 |  |  | 40h | 2,100 |
| 324 | 1.2.4.1.1 | 构建反馈信息数据表 | manual | 1d | 2023-12-12 | 2023-12-12 |  | 庞露 | 8h | 420 |
| 325 | 1.2.4.1.2 | 设计查看所有反馈申请界面 | manual | 1d | 2023-12-12 | 2023-12-12 |  | 庞露 | 8h | 420 |
| 326 | 1.2.4.1.3 | 查看反馈申请处理编码 | manual | 1d | 2023-12-29 | 2023-12-29 | 325 | 许晓伟 | 8h | 420 |
| 327 | 1.2.4.1.4 | 单元测试 | manual | 1d | 2023-12-30 | 2023-12-30 | 326 | 许晓伟 | 8h | 420 |
| 328 | 1.2.4.1.5 | 文档编写 | manual | 1d | 2023-12-30 | 2023-12-30 | 327 | 庞露 | 8h | 420 |
| 329 | 1.2.4.2 | **查看单条反馈信息** |  | 1d? | 2023-12-11 | 2023-12-11 |  |  | 32h | 1,680 |
| 330 | 1.2.4.2.1 | 设计查看单条反馈信息申请界面 | manual | 1d | 2023-12-12 | 2023-12-12 |  | 庞露 | 8h | 420 |
| 331 | 1.2.4.2.2 | 查看单条反馈信息申请处理编码 | manual | 1d | 2023-12-29 | 2023-12-29 | 330 | 崔承武 | 8h | 420 |
| 332 | 1.2.4.2.3 | 单元测试 | manual | 1d | 2023-12-30 | 2023-12-30 | 331 | 崔承武 | 8h | 420 |
| 333 | 1.2.4.2.4 | 文档编写 | manual | 1d | 2023-12-30 | 2023-12-30 | 332 | 庞露 | 8h | 420 |
| 334 | 1.2.4.3 | **修改反馈状态** |  | 1d? | 2023-12-11 | 2023-12-11 |  |  | 32h | 1,680 |
| 335 | 1.2.4.3.1 | 设计修改反馈状态申请界面 | manual | 1d | 2023-12-12 | 2023-12-12 |  | 庞露 | 8h | 420 |
| 336 | 1.2.4.3.2 | 修改反馈状态处理编码 | manual | 1d | 2023-12-29 | 2023-12-29 | 335 | 李政 | 8h | 420 |
| 337 | 1.2.4.3.3 | 单元测试 | manual | 1d | 2023-12-30 | 2023-12-30 | 336 | 李政 | 8h | 420 |
| 338 | 1.2.4.3.4 | 文档编写 | manual | 1d | 2023-12-30 | 2023-12-30 | 337 | 庞露 | 8h | 420 |
